Schedule from MS Project, 2010-04-05 to 2012-05-25.

## Calendars

- 行政日历: Mon-Fri 08:00-12:00, 13:00-17:00; Sat-Sun off. Exceptions (off unless hours are given): 2010-05-03 to 2010-05-05, 2010-10-01, 2010-10-04 to 2010-10-05, 2011-01-03, 2011-02-03 to 2011-02-04, 2011-02-07, 2011-04-02 08:00-12:00, 13:00-17:00, 2011-04-04 to 2011-04-05, 2011-04-30 08:00-12:00, 13:00-17:00, 2011-05-02, 2011-05-03 to 2011-05-04 08:00-12:00, 13:00-17:00, 2011-09-10 08:00-12:00, 13:00-17:00, 2011-10-03 to 2011-10-05, 2011-10-08 08:00-12:00, 13:00-17:00, 2011-10-22 to 2011-10-23 08:00-12:00, 13:00-17:00, 2012-02-25 08:00-12:00, 13:00-17:00.

## Resources

| Resource |
| --- |
| 胡中明 |
| 万青松 |
| 廖金海 |
| 刘志强 |
| 苏煦烽 |
| 方卫亮 |
| 实施 |
| 实施人员 |
| 方 |
| 马炜 |
| 周劲松 |
| 杨明净 |
| 钟广雄 |
| 叶镇球 |

## Schedule

| ID | WBS | Task | Duration | Start | Finish | Predecessors | Baseline start | Baseline finish | Baseline duration | Total slack | Free slack | Constraint | Resources | Work | Baseline cost |
| --- | --- | --- | --- | --- | --- | --- | --- | --- | --- | --- | --- | --- | --- | --- | --- |
| 1 | 1 | **智能终端统一软件架构平台** | 551d? | 2010-04-05 | 2012-05-25 |  |  |  |  | 0d |  |  |  | 2537.6h |  |
| 2 | 1.1 | **管理WBS** | 551d? | 2010-04-05 | 2012-05-25 |  |  |  |  | 0d |  |  |  | 192h |  |
| 3 | 1.1.1 | 立项 | 4d? | 2011-03-01 | 2011-03-04 |  | 2010-04-01 | 2010-04-02 | 2d? | 280d | 0d | start no earlier than 2011-03-01 | 胡中明 [50%] | 16h | 282.24 |
| 4 | 1.1.2 | **项目策划** | 7d? | 2011-03-21 | 2011-03-29 |  | 2010-04-21 | 2010-04-30 | 8d? | 304d |  |  |  | 84h | 2,417.84 |
| 5 | 1.1.2.1 | WBS及估算 | 2d? | 2011-03-21 | 2011-03-22 | 33 | 2010-04-21 | 2010-04-22 | 2d? | 304d | 0d |  | 胡中明 | 16h | 564.48 |
| 6 | 1.1.2.2 | 进度安排 | 1d? | 2011-03-23 | 2011-03-23 | 5 | 2010-04-23 | 2010-04-26 | 2d? | 304d | 0d |  | 胡中明 | 8h | 564.48 |
| 7 | 1.1.2.3 | 项目总体计划及风险分析 | 3d? | 2011-03-24 | 2011-03-28 | 6 | 2010-04-27 | 2010-04-29 | 3d? | 304d | 0d |  | 胡中明 | 48h | 846.72 |
| 8 | 1.1.2.4 | 计划评审 | 1d? | 2011-03-29 | 2011-03-29 | 7 | 2010-04-30 | 2010-04-30 | 1d? | 304d |  |  | 周劲松 [25%]; 廖金海 [25%]; 万青松 [25%]; 杨明净 [25%]; 方卫亮 [25%]; 胡中明 [25%] | 12h | 442.16 |
| 9 | 1.1.3 | **项目监控** | 531d? | 2010-04-05 | 2012-04-27 |  | 2010-04-05 | 2010-10-08 | 135d? | 20d |  |  |  | 52h | 1,340.64 |
| 10 | 1.1.3.1 | **定期跟踪** | 278d | 2010-04-05 | 2011-05-12 |  | 2010-04-05 | 2010-10-08 | 135d | 273d |  |  |  | 28h | 987.84 |
| 11 | 1.1.3.1.1 | 定期跟踪 1 | 1d | 2010-04-05 | 2010-04-05 |  | 2010-04-05 | 2010-04-05 | 1d | 550d |  | start no earlier than 2010-04-05 | 胡中明 [25%] | 2h | 70.56 |
| 12 | 1.1.3.1.2 | 定期跟踪 2 | 1d | 2010-05-03 | 2010-05-03 |  | 2010-04-19 | 2010-04-19 | 1d | 530d |  | start no earlier than 2010-05-03 | 胡中明 [25%] | 2h | 70.56 |
| 13 | 1.1.3.1.3 | 定期跟踪 3 | 1d | 2010-06-14 | 2010-06-14 |  | 2010-05-03 | 2010-05-03 | 1d | 503d |  | start no earlier than 2010-06-14 | 胡中明 [25%] | 2h | 70.56 |
| 14 | 1.1.3.1.4 | 定期跟踪 4 | 1d | 2010-07-12 | 2010-07-12 |  | 2010-05-17 | 2010-05-17 | 1d | 483d |  | start no earlier than 2010-07-12 | 胡中明 [25%] | 2h | 70.56 |
| 15 | 1.1.3.1.5 | 定期跟踪 5 | 1d | 2010-08-09 | 2010-08-09 |  | 2010-05-31 | 2010-05-31 | 1d | 463d |  | start no earlier than 2010-08-09 | 胡中明 [25%] | 2h | 70.56 |
| 16 | 1.1.3.1.6 | 定期跟踪 6 | 1d | 2010-09-06 | 2010-09-06 |  | 2010-06-14 | 2010-06-14 | 1d | 443d |  | start no earlier than 2010-09-06 | 胡中明 [25%] | 2h | 70.56 |
| 17 | 1.1.3.1.7 | 定期跟踪 7 | 1d | 2010-10-08 | 2010-10-08 |  | 2010-06-28 | 2010-06-28 | 1d | 422d |  | start no earlier than 2010-10-08 | 廖金海 [25%] | 2h | 70.56 |
| 18 | 1.1.3.1.8 | 定期跟踪 8 | 1d | 2010-11-15 | 2010-11-15 |  | 2010-07-12 | 2010-07-12 | 1d | 396d |  | start no earlier than 2010-11-15 | 廖金海 [25%] | 2h | 70.56 |
| 19 | 1.1.3.1.9 | 定期跟踪 9 | 1d | 2010-12-13 | 2010-12-13 |  | 2010-07-26 | 2010-07-26 | 1d | 376d |  | start no earlier than 2010-12-13 | 廖金海 [25%] | 2h | 70.56 |
| 20 | 1.1.3.1.10 | 定期跟踪 10 | 1d | 2011-01-10 | 2011-01-10 |  | 2010-08-09 | 2010-08-09 | 1d | 357d |  | start no earlier than 2011-01-10 | 廖金海 [25%] | 2h | 70.56 |
| 21 | 1.1.3.1.11 | 定期跟踪 11 | 1d | 2011-02-11 | 2011-02-11 |  | 2010-08-23 | 2010-08-23 | 1d | 336d |  | finish no earlier than 2011-02-11 | 廖金海 [25%] | 2h | 70.56 |
| 22 | 1.1.3.1.12 | 定期跟踪 12 | 1d | 2011-03-10 | 2011-03-10 |  | 2010-09-06 | 2010-09-06 | 1d | 317d |  | finish no earlier than 2011-03-10 | 廖金海 [25%] | 2h | 70.56 |
| 23 | 1.1.3.1.13 | 定期跟踪 13 | 1d | 2011-04-12 | 2011-04-12 |  | 2010-09-20 | 2010-09-20 | 1d | 295d |  | finish no earlier than 2011-04-12 | 廖金海 [25%] | 2h | 70.56 |
| 24 | 1.1.3.1.14 | 定期跟踪 14 | 1d | 2011-05-12 | 2011-05-12 |  | 2010-10-08 | 2010-10-08 | 1d | 273d |  | start no earlier than 2011-05-12 | 廖金海 [25%] | 2h | 70.56 |

| ID | WBS | Task | Type | Duration | Start | Finish | Predecessors | Baseline start | Baseline finish | Baseline duration | Total slack | Free slack | Constraint | Resources | Work | Baseline cost |
| --- | --- | --- | --- | --- | --- | --- | --- | --- | --- | --- | --- | --- | --- | --- | --- | --- |
| 25 | 1.1.3.2 | **里程碑跟踪** |  | 519d? | 2010-04-20 | 2012-04-27 |  | 2010-04-20 | 2010-09-30 | 118d? | 20d |  |  |  | 24h | 352.8 |
| 26 | 1.1.3.2.1 | 需求 | milestone | 0d? | 2010-04-20 | 2010-04-20 |  | 2010-04-20 | 2010-04-20 | 1d? | 539d |  | finish no earlier than 2010-04-20 | 胡中明 [25%] |  | 70.56 |
| 27 | 1.1.3.2.2 | 设计 |  | 1d? | 2010-05-31 | 2010-05-31 |  | 2010-05-31 | 2010-05-31 | 1d? | 513d |  | start no earlier than 2010-05-31 | 胡中明 [25%] | 2h | 70.56 |
| 28 | 1.1.3.2.3 | 实施 |  | 1d | 2010-12-31 | 2010-12-31 |  | 2010-07-30 | 2010-07-30 | 1d? | 362d |  | start no earlier than 2010-12-30 | 廖金海 [25%] | 2h | 70.56 |
| 29 | 1.1.3.2.4 | 内部测试 |  | 5d | 2012-03-12 | 2012-03-16 |  | 2010-08-02 | 2010-08-02 | 1d? | 50d |  | finish no earlier than 2012-03-16 | 廖金海 [25%] | 10h | 70.56 |
| 30 | 1.1.3.2.5 | 现场测试 |  | 5d | 2012-04-23 | 2012-04-27 |  | 2010-09-30 | 2010-09-30 | 1d? | 20d |  | start no earlier than 2012-04-20 | 廖金海 [25%] | 10h | 70.56 |
| 31 | 1.1.4 | 项目结项 |  | 5d? | 2012-05-21 | 2012-05-25 |  | 2010-10-08 | 2010-10-15 | 6d? | 0d |  | finish no earlier than 2012-05-25 | 廖金海 | 40h | 1,693.44 |
| 32 | 1.2 | **技术WBS** |  | 277d? | 2011-03-07 | 2012-03-26 |  |  |  |  | 44d |  |  |  | 1997.6h |  |
| 33 | 1.2.1 | **需求分析** |  | 10d? | 2011-03-07 | 2011-03-18 |  |  |  |  | 280d | 0d |  |  | 96h |  |
| 34 | 1.2.1.1 | 编写需求规格说明书 |  | 8d? | 2011-03-07 | 2011-03-16 | 3 | 2010-04-12 | 2010-04-16 | 5d? | 280d | 0d |  | 胡中明 | 64h | 1,411.2 |
| 35 | 1.2.1.2 | 创建需求跟踪矩阵 |  | 1d? | 2011-03-17 | 2011-03-17 | 34 | 2010-04-19 | 2010-04-19 | 1d? | 280d | 0d |  | 胡中明 | 8h | 282.24 |
| 36 | 1.2.1.3 | 需求评审 |  | 1d? | 2011-03-18 | 2011-03-18 | 35 | 2010-04-20 | 2010-04-20 | 1d? | 280d | 9d |  | 周劲松 [50%]; 廖金海 [50%]; 万青松 [50%]; 杨明净 [50%]; 方卫亮 [50%]; 胡中明 [50%] | 24h | 884.32 |
| 37 | 1.2.2 | **概要设计** |  | 9d? | 2011-04-01 | 2011-04-14 |  |  |  |  | 271d |  |  |  | 56h |  |
| 38 | 1.2.2.1 | 架构（概要）方案设计 |  | 10d | 2011-04-01 | 2011-04-14 | 36 |  |  |  | 271d | 0d | start no earlier than 2011-04-01 | 廖金海; 胡中明 [20%] | 56h |  |
| 39 | 1.2.2.2 | 方案评审 | milestone | 0d? | 2011-04-14 | 2011-04-14 | 38 |  |  |  | 272d | 24d |  | 周劲松 [25%]; 胡中明 [25%]; 廖金海 [25%]; 万青松 [25%]; 刘志强 [25%] |  |  |
| 40 | 1.2.3 | **详细设计** |  | 10d? | 2011-05-19 | 2011-06-01 |  |  |  |  | 248d |  |  |  | 118h |  |
| 41 | 1.2.3.1 | 详细方案设计 |  | 9d | 2011-05-19 | 2011-05-31 | 39 |  |  |  | 248d | 0d | finish no earlier than 2011-05-31 | 万青松 [50%]; 胡中明 [50%]; 廖金海 [50%] | 108h |  |
| 42 | 1.2.3.2 | 方案评审 |  | 1d? | 2011-06-01 | 2011-06-01 | 41 |  |  |  | 248d | 61d |  | 周劲松 [25%]; 胡中明 [25%]; 廖金海 [25%]; 万青松 [25%]; 刘志强 [25%] | 10h |  |
| 43 | 1.2.4 | **主版本开发** |  | 160d? | 2011-07-18 | 2012-02-23 |  |  |  |  | 67d |  |  |  | 487.6h |  |
| 44 | 1.2.4.1 | **代码实现** |  | 157d? | 2011-07-18 | 2012-02-20 |  |  |  |  | 70d |  |  |  | 471.6h |  |
| 45 | 1.2.4.1.1 | **上行模块（后台通讯进程）** |  | 123d? | 2011-08-26 | 2012-02-13 |  |  |  |  | 75d |  |  |  | 169.6h |  |
| 46 | 1.2.4.1.1.1 | 上行框架编码 |  | 11d? | 2011-08-26 | 2011-09-09 | 42 |  |  |  | 187d |  | start no earlier than 2011-08-26 | 廖金海 | 88h |  |
| 47 | 1.2.4.1.1.2 | 链路接口检测及维护 |  | 4d? | 2011-09-12 | 2011-09-15 | 42 |  |  |  | 178d | 21d | finish no earlier than 2011-09-15 | 廖金海 | 32h |  |
| 48 | 1.2.4.1.1.3 | 参数设置与查询 |  | 2d | 2011-10-19 | 2011-10-20 | 47 |  |  |  | 157d | 0d | start no earlier than 2011-10-19 | 廖金海 | 16h |  |
| 49 | 1.2.4.1.1.4 | 读当前数据 |  | 1d | 2011-10-21 | 2011-10-22 | 48 |  |  |  | 156d | 1d | finish no earlier than 2011-10-22 | 廖金海 | 8h |  |
| 50 | 1.2.4.1.1.5 | 读历史数据 |  | 1d | 2011-10-24 | 2011-10-24 | 49 |  |  |  | 155d |  | start no earlier than 2011-10-23 | 廖金海 | 8h |  |
| 51 | 1.2.4.1.1.6 | 读任务数据 |  | 2d | 2012-02-06 | 2012-02-07 |  |  |  |  | 76d | 0d | finish no earlier than 2012-02-07 | 廖金海 [50%] | 8h |  |
| 52 | 1.2.4.1.1.7 | 读告警数据 |  | 1d | 2012-02-08 | 2012-02-08 | 51 |  |  |  | 76d | 0d | start no earlier than 2012-02-08 | 廖金海 [50%] | 4h |  |
| 53 | 1.2.4.1.1.8 | 读事件记录 |  | 1d | 2012-02-09 | 2012-02-09 | 52 |  |  |  | 76d | 0d |  | 廖金海 [50%] | 4h |  |
| 54 | 1.2.4.1.1.9 | PPP拨号 |  | 1d? | 2012-02-10 | 2012-02-10 | 53 |  |  |  | 75d |  |  |  |  |  |
| 55 | 1.2.4.1.1.10 | 单元测试 |  | 2d | 2012-02-10 | 2012-02-13 |  |  |  |  | 75d |  | finish no earlier than 2012-02-13 | 廖金海 [10%] | 1.6h |  |

Notes:
- 48: 通信参数、时间参数、告警屏蔽、阈值参数、抄表参数、任务参数、负荷管理参数、测量点参数
- 49: 正反向有无功、电压、电流、功率、功率因数
- 50: 正反向有无功、电压、电流、功率、功率因数

| ID | WBS | Task | Duration | Start | Finish | Predecessors | Total slack | Free slack | Constraint | Resources | Work |
| --- | --- | --- | --- | --- | --- | --- | --- | --- | --- | --- | --- |
| 56 | 1.2.4.1.2 | **下行模块（电表采集进程）** | 45d | 2011-12-20 | 2012-02-20 |  | 70d |  |  |  | 112h |
| 57 | 1.2.4.1.2.1 | 应用层 | 3d | 2012-02-06 | 2012-02-08 |  | 70d | 0d | finish no earlier than 2012-02-08 | 万青松 | 24h |
| 58 | 1.2.4.1.2.2 | 数据寄存器存储和读取 | 1d | 2012-02-09 | 2012-02-09 | 57 | 70d | 0d | finish no earlier than 2012-02-09 | 万青松 | 8h |
| 59 | 1.2.4.1.2.3 | 电表规约层 | 1d | 2012-02-10 | 2012-02-10 | 58 | 70d | 0d |  | 万青松 | 8h |
| 60 | 1.2.4.1.2.4 | 数据存储与读取 | 2d | 2012-02-13 | 2012-02-14 | 59 | 70d | 0d | finish no earlier than 2012-02-14 | 万青松 | 16h |
| 61 | 1.2.4.1.2.5 | 告警、事件记录 | 4d | 2012-02-15 | 2012-02-20 | 60 | 70d |  | finish no earlier than 2011-11-16 | 万青松 | 32h |
| 62 | 1.2.4.1.2.6 | 通道层 | 1d | 2011-12-20 | 2011-12-20 |  | 112d | 0d | start no earlier than 2011-12-20 | 万青松 | 8h |
| 63 | 1.2.4.1.2.7 | 单元测试 | 2d | 2011-12-21 | 2011-12-22 | 62 | 112d |  | finish no earlier than 2011-12-22 | 万青松 | 16h |
| 64 | 1.2.4.1.3 | **UI模块（液晶进程）** | 157d? | 2011-07-18 | 2012-02-20 |  | 70d |  |  |  | 190h |
| 65 | 1.2.4.1.3.1 | 驱动层 | 22d | 2011-07-18 | 2011-08-16 |  | 180d | 0d | finish no earlier than 2011-08-16 | 胡中明 [25%] | 44h |
| 66 | 1.2.4.1.3.2 | 组件层 | 25d | 2011-08-17 | 2011-09-20 | 65 | 179d |  | start no earlier than 2011-08-16 | 胡中明 [25%] | 50h |
| 67 | 1.2.4.1.3.3 | 窗口模拟器 | 4d | 2012-01-04 | 2012-01-09 |  | 100d |  | start no earlier than 2012-01-04 | 廖金海 [50%] | 16h |
| 68 | 1.2.4.1.3.4 | 一二级菜单 | 5d? | 2012-02-06 | 2012-02-10 |  | 74d | 0d | finish no earlier than 2012-02-10 | 叶镇球 | 40h |
| 69 | 1.2.4.1.3.5 | 桌面 | 2d | 2012-02-13 | 2012-02-14 | 68 | 74d |  | start no earlier than 2011-12-16 | 叶镇球 | 16h |
| 70 | 1.2.4.1.3.6 | 单元测试 | 3d | 2012-02-16 | 2012-02-20 |  | 70d |  | start no earlier than 2012-02-16 | 叶镇球 | 24h |
| 71 | 1.2.4.2 | **集成（联调）测试** | 2d | 2012-02-22 | 2012-02-23 |  | 67d |  |  |  | 16h |
| 72 | 1.2.4.2.1 | 主版本发布测试 | 2d | 2012-02-22 | 2012-02-23 | 42 | 67d |  | finish no earlier than 2012-02-23 | 马炜 | 16h |
| 73 | 1.2.5 | **集抄分支版本开发** | 24d? | 2012-02-23 | 2012-03-26 |  | 44d |  |  |  | 272h |
| 74 | 1.2.5.1 | **代码实现** | 9d? | 2012-02-23 | 2012-03-05 |  | 59d |  |  |  | 80h |
| 75 | 1.2.5.1.1 | 表计规约扩容（GD645） | 1d? | 2012-02-23 | 2012-02-23 |  | 62d | 0d | start no earlier than 2012-02-23 | 万青松 | 8h |
| 76 | 1.2.5.1.2 | 告警和事件处理 | 1d? | 2012-02-24 | 2012-02-24 | 75 | 62d | 1d |  | 万青松 | 8h |
| 77 | 1.2.5.1.3 | 总线层扩容（东软方案） | 4d? | 2012-02-27 | 2012-03-01 | 76 | 61d |  |  | 万青松 | 32h |
| 78 | 1.2.5.1.4 | 总线层扩容（晓程载波方案） | 4d? | 2012-02-29 | 2012-03-05 |  | 59d |  | finish no earlier than 2012-03-05 | 万青松 | 32h |
| 79 | 1.2.5.2 | **UI模块（液晶进程）** | 9d? | 2012-02-23 | 2012-03-05 |  | 59d |  |  |  | 88h |
| 80 | 1.2.5.2.1 | **参数设置与查看** | 5d? | 2012-02-23 | 2012-02-28 |  | 63d |  |  |  | 40h |
| 81 | 1.2.5.2.1.1 | 通讯通道设置 | 1d? | 2012-02-23 | 2012-02-23 |  | 65d | 2d | finish no earlier than 2012-02-23 | 叶镇球 | 8h |
| 82 | 1.2.5.2.1.2 | 测量点参数设置 | 1d? | 2012-02-24 | 2012-02-24 |  | 66d |  | finish no earlier than 2012-02-24 | 叶镇球 | 8h |
| 83 | 1.2.5.2.1.3 | 终端时间设置 | 1d? | 2012-02-27 | 2012-02-27 | 81 | 63d | 0d | start no earlier than 2012-02-25 | 叶镇球 | 8h |
| 84 | 1.2.5.2.1.4 | 界面密码设置 | 1d? | 2012-02-27 | 2012-02-27 |  | 64d |  | finish no earlier than 2012-02-27 | 叶镇球 | 8h |
| 85 | 1.2.5.2.1.5 | 终端编号设置 | 1d? | 2012-02-28 | 2012-02-28 | 83 | 63d |  | finish no earlier than 2012-02-28 | 叶镇球 | 8h |

Notes:
- 59: 移植实现GB645的97和07版
- 61: A相失压记录 B相失压记录 C相失压记录 A相失流记录 B相失流记录 C相流压记录 终端停电记录
- 62: 暂时实现RS485
- 64: 移植国网集抄的液晶模块

| ID | WBS | Task | Duration | Start | Finish | Predecessors | Total slack | Free slack | Constraint | Resources | Work |
| --- | --- | --- | --- | --- | --- | --- | --- | --- | --- | --- | --- |
| 86 | 1.2.5.2.2 | **终端管理与维护** | 5d? | 2012-02-28 | 2012-03-05 |  | 59d |  |  |  | 48h |
| 87 | 1.2.5.2.2.1 | 终端版本 | 1d? | 2012-02-28 | 2012-02-28 |  | 62d | 0d | start no earlier than 2012-02-28 | 叶镇球 | 8h |
| 88 | 1.2.5.2.2.2 | 重启终端 | 1d? | 2012-02-29 | 2012-02-29 | 87 | 62d |  |  | 叶镇球 | 8h |
| 89 | 1.2.5.2.2.3 | 告警查询 | 1d? | 2012-02-29 | 2012-02-29 |  | 59d | 0d | start no earlier than 2012-02-29 | 叶镇球 | 8h |
| 90 | 1.2.5.2.2.4 | 液晶调节 | 1d? | 2012-03-01 | 2012-03-01 | 89 | 59d | 0d |  | 叶镇球 | 8h |
| 91 | 1.2.5.2.2.5 | 信号强度和电池电量 | 1d? | 2012-03-02 | 2012-03-02 | 90 | 59d | 0d |  | 叶镇球 | 8h |
| 92 | 1.2.5.2.2.6 | 无线实时状态 | 1d? | 2012-03-05 | 2012-03-05 | 91 | 59d |  |  | 叶镇球 | 8h |
| 93 | 1.2.5.3 | **集成（联调）测试** | 15d? | 2012-03-06 | 2012-03-26 |  | 44d |  |  |  | 104h |
| 94 | 1.2.5.3.1 | 发布测试 | 6d? | 2012-03-06 | 2012-03-13 |  | 53d |  | finish no earlier than 2012-03-13 | 马炜 | 48h |
| 95 | 1.2.5.3.2 | 回归测试1 | 4d? | 2012-03-16 | 2012-03-21 |  | 47d |  | finish no earlier than 2012-03-21 | 马炜 | 32h |
| 96 | 1.2.5.3.3 | 回归测试2 | 3d? | 2012-03-22 | 2012-03-26 |  | 44d |  | finish no earlier than 2012-03-26 | 马炜 | 24h |
| 97 | 1.2.6 | **负控分支版本开发** | 24d? | 2012-02-23 | 2012-03-26 |  | 44d |  |  |  | 464h |
| 98 | 1.2.6.1 | **代码实现** | 9d? | 2012-02-23 | 2012-03-05 |  | 59d |  |  |  | 360h |
| 99 | 1.2.6.1.1 | **负控控制处理** | 9d? | 2012-02-23 | 2012-03-05 |  | 59d |  |  |  | 192h |
| 100 | 1.2.6.1.1.1 | 移植 | 3d? | 2012-02-23 | 2012-02-27 |  | 64d |  | finish no earlier than 2012-02-27 | 钟广雄 | 24h |
| 101 | 1.2.6.1.1.2 | 负荷管理参数配置文件 | 2d? | 2012-02-27 | 2012-02-28 |  | 63d |  | finish no earlier than 2012-02-28 | 钟广雄 | 16h |
| 102 | 1.2.6.1.1.3 | 负荷管理参数文件读写调试 | 2d? | 2012-02-27 | 2012-02-28 |  | 63d |  | start no earlier than 2012-02-27 | 钟广雄 | 16h |
| 103 | 1.2.6.1.1.4 | 负控开关参数 | 2d? | 2012-02-28 | 2012-02-29 |  | 62d |  | finish no earlier than 2012-02-29 | 钟广雄 | 16h |
| 104 | 1.2.6.1.1.5 | 负控临时限电量控制 | 3d? | 2012-03-01 | 2012-03-05 |  | 59d |  | start no earlier than 2012-03-01 | 钟广雄 | 24h |
| 105 | 1.2.6.1.1.6 | 负控时段控功能 | 3d? | 2012-03-01 | 2012-03-05 |  | 59d |  | finish no earlier than 2012-03-05 | 钟广雄 | 24h |
| 106 | 1.2.6.1.1.7 | 月电量控制 | 3d? | 2012-03-01 | 2012-03-05 |  | 59d |  | start no earlier than 2012-03-01 | 钟广雄 | 24h |
| 107 | 1.2.6.1.1.8 | 购电量控制 | 3d? | 2012-03-01 | 2012-03-05 |  | 59d |  | start no earlier than 2012-03-01 | 钟广雄 | 24h |
| 108 | 1.2.6.1.1.9 | 脉冲采集 | 3d? | 2012-03-01 | 2012-03-05 |  | 59d |  | start no earlier than 2012-03-01 | 钟广雄 | 24h |
| 109 | 1.2.6.1.2 | **UI模块（液晶进程）** | 9d? | 2012-02-23 | 2012-03-05 |  | 59d |  |  |  | 168h |
| 110 | 1.2.6.1.2.1 | **本机数据显示** | 4d? | 2012-02-23 | 2012-02-27 |  | 64d |  |  |  | 48h |
| 111 | 1.2.6.1.2.1.1 | 当前数据 | 1d? | 2012-02-23 | 2012-02-23 |  | 66d | 0d | start no earlier than 2012-02-23 | 叶镇球 | 8h |
| 112 | 1.2.6.1.2.1.2 | 谐波数据 | 1d? | 2012-02-23 | 2012-02-23 |  | 66d | 0d | start no earlier than 2012-02-23 | 叶镇球 | 8h |
| 113 | 1.2.6.1.2.1.3 | 需量事件 | 1d? | 2012-02-24 | 2012-02-24 | 112 | 66d |  |  | 叶镇球 | 8h |
| 114 | 1.2.6.1.2.1.4 | 编程事件 | 1d? | 2012-02-24 | 2012-02-24 | 111 | 66d |  |  | 叶镇球 | 8h |
| 115 | 1.2.6.1.2.1.5 | 失压事件 | 1d? | 2012-02-27 | 2012-02-27 |  | 64d |  | start no earlier than 2012-02-27 | 叶镇球 | 8h |
| 116 | 1.2.6.1.2.1.6 | 失流事件 | 1d? | 2012-02-27 | 2012-02-27 |  | 64d |  | start no earlier than 2012-02-27 | 叶镇球 | 8h |

| ID | WBS | Task | Duration | Start | Finish | Predecessors | Total slack | Free slack | Constraint | Resources | Work |
| --- | --- | --- | --- | --- | --- | --- | --- | --- | --- | --- | --- |
| 117 | 1.2.6.1.2.2 | **测量点数据显示** | 1d? | 2012-02-27 | 2012-02-27 |  | 64d |  |  |  | 8h |
| 118 | 1.2.6.1.2.2.1 | 可以查看各测量点正向有功总电量、正向无功总电量、反向有功总电量、反向无功总电量、有功功率、无功功率、功率因数、正向有功最大需量及发生时间 | 1d? | 2012-02-27 | 2012-02-27 |  | 64d |  | start no earlier than 2012-02-27 | 叶镇球 | 8h |
| 119 | 1.2.6.1.2.3 | **负控数据查看** | 1d? | 2012-02-27 | 2012-02-27 |  | 64d |  |  |  | 8h |
| 120 | 1.2.6.1.2.3.1 | 能查看终端电控、功控相关信息如剩余电量、用电量、定值等信息 | 1d? | 2012-02-27 | 2012-02-27 |  | 64d |  | start no earlier than 2012-02-27 | 叶镇球 | 8h |
| 121 | 1.2.6.1.2.4 | **参数设置与查看** | 2d? | 2012-02-28 | 2012-02-29 |  | 62d |  |  |  | 40h |
| 122 | 1.2.6.1.2.4.1 | 通讯通道设置 | 1d? | 2012-02-28 | 2012-02-28 |  | 63d |  | start no earlier than 2012-02-28 | 叶镇球 | 8h |
| 123 | 1.2.6.1.2.4.2 | 测量点参数设置 | 1d? | 2012-02-28 | 2012-02-28 |  | 62d | 0d | start no earlier than 2012-02-28 | 叶镇球 | 8h |
| 124 | 1.2.6.1.2.4.3 | 终端时间设置 | 1d? | 2012-02-28 | 2012-02-28 |  | 62d | 0d | start no earlier than 2012-02-28 | 叶镇球 | 8h |
| 125 | 1.2.6.1.2.4.4 | 界面密码设置 | 1d? | 2012-02-29 | 2012-02-29 | 124 | 62d |  |  | 叶镇球 | 8h |
| 126 | 1.2.6.1.2.4.5 | 终端编号设置 | 1d? | 2012-02-29 | 2012-02-29 | 123 | 62d |  |  | 叶镇球 | 8h |
| 127 | 1.2.6.1.2.5 | **终端管理与维护** | 4d? | 2012-02-29 | 2012-03-05 |  | 59d |  |  |  | 64h |
| 128 | 1.2.6.1.2.5.1 | 终端版本 | 2d? | 2012-02-29 | 2012-03-01 |  | 61d |  | start no earlier than 2012-02-29 | 叶镇球 | 16h |
| 129 | 1.2.6.1.2.5.2 | 重启终端 | 1d? | 2012-03-01 | 2012-03-01 |  | 61d |  | finish no earlier than 2012-03-01 | 叶镇球 | 8h |
| 130 | 1.2.6.1.2.5.3 | 告警查询 | 1d? | 2012-03-01 | 2012-03-01 |  | 61d |  | finish no earlier than 2012-03-01 | 叶镇球 | 8h |
| 131 | 1.2.6.1.2.5.4 | 液晶调节 | 2d? | 2012-03-01 | 2012-03-02 |  | 60d |  | finish no earlier than 2012-03-02 | 叶镇球 | 16h |
| 132 | 1.2.6.1.2.5.5 | 信号强度和电池电量 | 1d? | 2012-03-02 | 2012-03-02 |  | 59d | 0d | finish no earlier than 2012-03-02 | 叶镇球 | 8h |
| 133 | 1.2.6.1.2.5.6 | 无线实时状态 | 1d? | 2012-03-05 | 2012-03-05 | 132 | 59d |  | start no earlier than 2012-03-05 | 叶镇球 | 8h |
| 134 | 1.2.6.2 | **集成（联调）测试** | 15d? | 2012-03-06 | 2012-03-26 |  | 44d |  |  |  | 104h |
| 135 | 1.2.6.2.1 | 发布测试 | 6d? | 2012-03-06 | 2012-03-13 |  | 53d |  | start no earlier than 2012-03-06 | 杨明净 | 48h |
| 136 | 1.2.6.2.2 | 回归测试1 | 4d? | 2012-03-16 | 2012-03-21 |  | 47d |  | start no earlier than 2012-03-16 | 杨明净 | 32h |
| 137 | 1.2.6.2.3 | 回归测试2 | 3d? | 2012-03-22 | 2012-03-26 |  | 44d |  | start no earlier than 2012-03-22 | 杨明净 | 24h |
| 138 | 1.2.7 | **配变分支版本开发** | 24d? | 2012-02-23 | 2012-03-26 |  | 44d |  |  | 杨明净 | 504h |
| 139 | 1.2.7.1 | **代码实现** | 24d? | 2012-02-23 | 2012-03-26 |  | 44d |  |  |  | 320h |
| 140 | 1.2.7.1.1 | **计量模块（交流采样进程）** | 15d? | 2012-02-23 | 2012-03-13 |  | 53d |  |  |  | 96h |
| 141 | 1.2.7.1.1.1 | 移植 | 3d | 2012-02-23 | 2012-02-27 |  | 53d | 0d | start no earlier than 2012-02-23 | 刘志强 | 24h |
| 142 | 1.2.7.1.1.2 | 封装交采，增加GB07规约 | 2d | 2012-02-28 | 2012-02-29 | 141 | 53d | 0d |  |  |  |
| 143 | 1.2.7.1.1.3 | 调试校准功能 | 1d? | 2012-03-01 | 2012-03-01 | 142 | 53d | 0d | start no earlier than 2012-02-23 | 刘志强 | 8h |
| 144 | 1.2.7.1.1.4 | 联调 | 8d? | 2012-03-02 | 2012-03-13 | 143 | 53d |  | finish no earlier than 2012-03-05 | 刘志强 | 64h |

| ID | WBS | Task | Duration | Start | Finish | Predecessors | Total slack | Free slack | Constraint | Resources | Work |
| --- | --- | --- | --- | --- | --- | --- | --- | --- | --- | --- | --- |
| 145 | 1.2.7.1.2 | **UI模块（液晶进程）** | 9d? | 2012-02-23 | 2012-03-05 |  | 59d |  |  |  | 144h |
| 146 | 1.2.7.1.2.1 | **本机数据显示** | 4d? | 2012-02-23 | 2012-02-27 |  | 64d |  |  |  | 48h |
| 147 | 1.2.7.1.2.1.1 | 当前数据 | 1d? | 2012-02-23 | 2012-02-23 |  | 66d | 0d | start no earlier than 2012-02-23 | 叶镇球 | 8h |
| 148 | 1.2.7.1.2.1.2 | 谐波数据 | 1d? | 2012-02-23 | 2012-02-23 |  | 66d | 0d | start no earlier than 2012-02-23 | 叶镇球 | 8h |
| 149 | 1.2.7.1.2.1.3 | 需量事件 | 1d? | 2012-02-24 | 2012-02-24 | 148 | 66d |  |  | 叶镇球 | 8h |
| 150 | 1.2.7.1.2.1.4 | 编程事件 | 1d? | 2012-02-24 | 2012-02-24 | 147 | 66d |  |  | 叶镇球 | 8h |
| 151 | 1.2.7.1.2.1.5 | 失压事件 | 1d? | 2012-02-27 | 2012-02-27 |  | 64d |  | start no earlier than 2012-02-27 | 叶镇球 | 8h |
| 152 | 1.2.7.1.2.1.6 | 失流事件 | 1d? | 2012-02-27 | 2012-02-27 |  | 64d |  | start no earlier than 2012-02-27 | 叶镇球 | 8h |
| 153 | 1.2.7.1.2.2 | **测量点数据显示** | 1d? | 2012-02-27 | 2012-02-27 |  | 64d |  |  |  | 8h |
| 154 | 1.2.7.1.2.2.1 | 可以查看各测量点正向有功总电量、正向无功总电量、反向有功总电量、反向无功总电量、有功功率、无功功率、功率因数、正向有功最大需量及发生时间 | 1d? | 2012-02-27 | 2012-02-27 |  | 64d |  | start no earlier than 2012-02-27 | 叶镇球 | 8h |
| 155 | 1.2.7.1.2.3 | **参数设置与查看** | 2d? | 2012-02-28 | 2012-02-29 |  | 62d |  |  |  | 40h |
| 156 | 1.2.7.1.2.3.1 | 通讯通道设置 | 1d? | 2012-02-28 | 2012-02-28 |  | 63d |  | start no earlier than 2012-02-28 | 叶镇球 | 8h |
| 157 | 1.2.7.1.2.3.2 | 测量点参数设置 | 1d? | 2012-02-28 | 2012-02-28 |  | 62d | 0d | start no earlier than 2012-02-28 | 叶镇球 | 8h |
| 158 | 1.2.7.1.2.3.3 | 终端时间设置 | 1d? | 2012-02-28 | 2012-02-28 |  | 62d | 0d | start no earlier than 2012-02-28 | 叶镇球 | 8h |
| 159 | 1.2.7.1.2.3.4 | 界面密码设置 | 1d? | 2012-02-29 | 2012-02-29 | 158 | 62d |  |  | 叶镇球 | 8h |
| 160 | 1.2.7.1.2.3.5 | 终端编号设置 | 1d? | 2012-02-29 | 2012-02-29 | 157 | 62d |  |  | 叶镇球 | 8h |
| 161 | 1.2.7.1.2.4 | **终端管理与维护** | 4d? | 2012-02-29 | 2012-03-05 |  | 59d |  |  |  | 48h |
| 162 | 1.2.7.1.2.4.1 | 终端版本 | 1d? | 2012-02-29 | 2012-02-29 |  | 62d |  | start no earlier than 2012-02-29 | 叶镇球 | 8h |
| 163 | 1.2.7.1.2.4.2 | 重启终端 | 1d? | 2012-02-29 | 2012-02-29 |  | 62d |  | start no earlier than 2012-02-29 | 叶镇球 | 8h |
| 164 | 1.2.7.1.2.4.3 | 告警查询 | 1d? | 2012-03-01 | 2012-03-01 |  | 60d | 0d | start no earlier than 2012-03-01 | 叶镇球 | 8h |
| 165 | 1.2.7.1.2.4.4 | 液晶调节 | 1d? | 2012-03-02 | 2012-03-02 | 164 | 60d |  |  | 叶镇球 | 8h |
| 166 | 1.2.7.1.2.4.5 | 信号强度和电池电量 | 1d? | 2012-03-02 | 2012-03-02 |  | 60d |  | start no earlier than 2012-03-02 | 叶镇球 | 8h |
| 167 | 1.2.7.1.2.4.6 | 无线实时状态 | 1d? | 2012-03-05 | 2012-03-05 |  | 59d |  | finish no earlier than 2012-03-05 | 叶镇球 | 8h |
| 168 | 1.2.7.1.3 | **集成（联调）测试** | 10d? | 2012-03-13 | 2012-03-26 |  | 44d |  |  |  | 80h |
| 169 | 1.2.7.1.3.1 | 发布测试 | 4d? | 2012-03-13 | 2012-03-16 |  | 47d | 0d | finish no earlier than 2012-03-16 | 马炜 | 32h |
| 170 | 1.2.7.1.3.2 | 回归测试1 | 3d? | 2012-03-19 | 2012-03-21 | 169 | 47d |  |  | 马炜 | 24h |
| 171 | 1.2.7.1.3.3 | 回归测试2 | 3d? | 2012-03-22 | 2012-03-26 |  | 44d |  | start no earlier than 2012-03-22 | 马炜 | 24h |

| ID | WBS | Task | Duration | Start | Finish | Total slack | Constraint | Resources | Work |
| --- | --- | --- | --- | --- | --- | --- | --- | --- | --- |
| 172 | 1.3 | **支持活动WBS** | 345d? | 2010-12-01 | 2012-03-30 | 40d |  |  | 348h |
| 173 | 1.3.1 | **QA** | 313d? | 2010-12-01 | 2012-02-16 | 72d |  |  | 34h |
| 174 | 1.3.1.1 | 编写QA计划 | 1d? | 2010-12-01 | 2010-12-01 | 384d | start no earlier than 2010-12-01 | 杨明净 | 8h |
| 175 | 1.3.1.2 | **QA** | 310d | 2010-12-06 | 2012-02-16 | 72d |  |  | 26h |
| 176 | 1.3.1.2.1 | QA 1 | 0.25d | 2010-12-06 | 2010-12-06 | 381.75d | start no earlier than 2010-12-06 | 杨明净 | 2h |
| 177 | 1.3.1.2.2 | QA 2 | 1d | 2011-04-20 | 2011-04-20 | 289d | finish no earlier than 2011-04-20 | 杨明净 | 8h |
| 178 | 1.3.1.2.3 | QA 3 | 1d | 2011-08-18 | 2011-08-18 | 203d | finish no earlier than 2011-08-18 | 杨明净 | 8h |
| 179 | 1.3.1.2.4 | QA 4 | 1d | 2012-02-16 | 2012-02-16 | 72d | finish no earlier than 2012-02-16 | 杨明净 | 8h |
| 180 | 1.3.2 | **CM** | 345d? | 2010-12-01 | 2012-03-30 | 40d |  |  | 314h |
| 181 | 1.3.2.1 | 建立配置库 | 0.25d? | 2010-12-01 | 2010-12-01 | 384.75d | start no earlier than 2010-12-01 | 杨明净 | 2h |
| 182 | 1.3.2.2 | 编写配置管理计划 | 1d? | 2010-12-01 | 2010-12-01 | 384d | start no earlier than 2010-12-01 | 杨明净 | 8h |
| 183 | 1.3.2.3 | **基线建立** | 344d | 2010-12-02 | 2012-03-30 | 40d |  |  | 272h |
| 184 | 1.3.2.3.1 | 计划基线 | 1d | 2010-12-02 | 2010-12-02 | 383d | start no earlier than 2010-12-02 | 杨明净 | 8h |
| 185 | 1.3.2.3.2 | 需求基线 | 1d | 2011-04-22 | 2011-04-22 | 287d | finish no earlier than 2011-04-22 | 杨明净 | 8h |
| 186 | 1.3.2.3.3 | 设计基线 | 1d | 2011-06-02 | 2011-06-02 | 258d | finish no earlier than 2011-06-02 | 杨明净 | 8h |
| 187 | 1.3.2.3.4 | 编码基线 | 1d | 2012-03-30 | 2012-03-30 | 40d | finish no earlier than 2012-03-30 | 杨明净 | 8h |
| 188 | 1.3.2.3.5 | 测试基线 | 29d | 2012-02-21 | 2012-03-30 | 40d | finish no earlier than 2012-03-30 | 杨明净 | 232h |
| 189 | 1.3.2.3.6 | 产品基线 | 1d | 2012-03-30 | 2012-03-30 | 40d | finish no earlier than 2012-03-30 | 杨明净 | 8h |
| 190 | 1.3.2.4 | **CM** | 309d | 2010-12-03 | 2012-02-14 | 74d |  |  | 32h |
| 191 | 1.3.2.4.1 | CM 1 | 1d | 2010-12-03 | 2010-12-03 | 382d | start no earlier than 2010-12-03 | 杨明净 | 8h |
| 192 | 1.3.2.4.2 | CM 2 | 1d | 2011-05-18 | 2011-05-18 | 269d | finish no earlier than 2011-05-18 | 杨明净 | 8h |
| 193 | 1.3.2.4.3 | CM 3 | 1d | 2011-12-28 | 2011-12-28 | 108d | finish no earlier than 2011-12-28 | 杨明净 | 8h |
| 194 | 1.3.2.4.4 | CM 4 | 1d | 2012-02-14 | 2012-02-14 | 74d | finish no earlier than 2012-02-14 | 杨明净 | 8h |
